Schedule from MS Project, 2019-12-25 to 2019-12-25.

## Calendars

- Standard: Mon-Fri 08:00-12:00, 13:00-17:00; Sat-Sun off.

## Schedule

| ID | WBS | Task | Type | Duration | Start | Finish | Total slack |
| --- | --- | --- | --- | --- | --- | --- | --- |
| 1 | 1 | **<Neuer Sammelvorgang>** |  | 1d | 2019-12-25 | 2019-12-25 | 0d |
| 2 | 1.1 | **<Neuer Sammelvorgang>** |  | 1d | 2019-12-25 | 2019-12-25 | 0d |
| 3 | 1.1.1 | <Neuer Vorgang> | manual | 1d | 2019-12-25 | 2019-12-25 |  |
| 4 | 1.1.2 | **<Neuer Sammelvorgang>** |  | 1d | 2019-12-25 | 2019-12-25 | 0d |
| 5 | 1.1.2.1 | <Neuer Vorgang> | manual | 1d | 2019-12-25 | 2019-12-25 |  |
